# BS Beauty Academy

How a schedule from ProjectLibre changed from version to version. A marks actual dates.

## Version 1 (saved 2025-05-07)

Note of the change: chore: reorganize repository structure following advisor's instructions

| ID | WBS | Task | Duration | Start | Finish | Predecessors | Constraint |
| --- | --- | --- | --- | --- | --- | --- | --- |
| 1 | 1 | **Sistema para Gerenciamento de Salão de Beleza** | 70d? | 2025-03-18 | 2025-06-24 |  |  |
| 2 |  | Início do Projeto | 0d | 2025-03-18 | 2025-03-18 |  |  |
| 4 | 1.2 | **Etapa 1: Definição do Tema** | 16d | 2025-03-18 | 2025-04-08 | 2SS |  |
| 5 |  | Definição da equipe | 2d | 2025-03-18 | 2025-03-19 |  |  |
| 6 |  | Busca da entidade parceira | 2d | 2025-03-20 | 2025-03-21 | 5 |  |
| 7 |  | Alinhamento de expectativas com entidade parceira | 6d | 2025-03-24 | 2025-03-31 | 6 |  |
| 8 |  | Elaboração e apresentação do tema | 6d | 2025-04-01 | 2025-04-08 | 7 | must finish on 2025-04-09 |
| 9 |  | Aprovação do Tema | 0d | 2025-04-08 | 2025-04-08 | 8, 10 |  |
| 10 |  | Preenchimento da 1ª tabela de autoavaliação | 14d | 2025-03-20 | 2025-04-08 |  | as late as possible |
| 12 | 1.3 | **Etapa 2: Desenho da Aplicação** | 15d | 2025-04-09 | 2025-04-29 | 9SS |  |
| 13 | 1.3.1 | **Elicitação de Requisitos** | 15d | 2025-04-09 | 2025-04-29 |  |  |
| 14 |  | Coleta de informações | 7d | 2025-04-09 | 2025-04-17 |  |  |
| 15 |  | Análise de requisitos | 3d | 2025-04-18 | 2025-04-22 | 14 |  |
| 16 |  | Definição formal dos requisitos | 3d | 2025-04-23 | 2025-04-25 | 15 |  |
| 17 |  | Validação dos requisitos | 2d | 2025-04-28 | 2025-04-29 | 16 |  |
| 18 | 1.3.2 | **Confecção de Diagramas** | 14d | 2025-04-09 | 2025-04-29 |  |  |
| 19 |  | Estudo de diagramas | 7d | 2025-04-09 | 2025-04-17 |  |  |
| 20 |  | Criação do diagrama de componentes | 7d | 2025-04-18 | 2025-04-28 | 19 |  |
| 21 |  | Criação do diagrama de implantação | 7d | 2025-04-18 | 2025-04-28 | 19 |  |
| 22 |  | Entrega do Desenho da Aplicação | 0d | 2025-04-29 | 2025-04-29 | 20, 21, 23 | must finish on 2025-04-29 |
| 23 |  | Preenchimento da 2ª tabela de autoavaliação | 14d | 2025-04-09 | 2025-04-28 |  |  |
| 25 | 1.4 | **Etapa 3: Estudo de Plataformas e Tecnologias** | 29d | 2025-04-09 | 2025-05-20 | 9SS |  |
| 26 |  | Levantamento de requisitos técnicos | 3d | 2025-04-09 | 2025-04-11 |  |  |
| 27 |  | Pesquisa de tecnologias e ferramentas de desenvolvimento | 26d | 2025-04-14 | 2025-05-19 | 26 |  |
| 28 |  | Avaliação de banco de dados | 26d | 2025-04-14 | 2025-05-19 | 26 |  |
| 29 |  | Análise de ferramentas de versionamento | 26d | 2025-04-14 | 2025-05-19 | 26 |  |
| 30 |  | Pesquisa de plataformas de deploy | 26d | 2025-04-14 | 2025-05-19 | 26 |  |
| 31 |  | Definição da arquitetura do sistema | 26d | 2025-04-14 | 2025-05-19 | 26 |  |
| 32 |  | Avaliação de ferramentas de gerenciamento de projeto | 26d | 2025-04-14 | 2025-05-19 | 26 |  |
| 33 |  | Prova de Conceito | 0d | 2025-05-20 | 2025-05-20 | 27, 28, 29, 30, 31, 32, 34 | must finish on 2025-05-20 |
| 34 |  | Preenchimento da 3ª tabela de autoavaliação | 29d | 2025-04-09 | 2025-05-19 |  |  |
| 36 | 1.5 | **Etapa 4: Desenvolvimento de Software** | 54d? | 2025-04-09 | 2025-06-24 | 9SS |  |
| 37 |  | Modelagem do Banco de Dados | 1d? | 2025-04-09 | 2025-04-09 |  |  |
| 38 |  | Implementação do Back-End | 1d? | 2025-04-09 | 2025-04-09 |  |  |
| 39 |  | Implementação do Front-End | 1d? | 2025-04-09 | 2025-04-09 |  |  |
| 40 |  | Deploy | 1d? | 2025-04-09 | 2025-04-09 |  |  |
| 41 |  | Apresentação do MVP | 0d | 2025-06-24 | 2025-06-24 |  | must finish on 2025-06-24 |
| 43 | 1.6 | **Etapa 5: Documentação** | 70d | 2025-03-18 | 2025-06-24 | 2SS |  |
| 44 |  | Criação do projeto no Overleaf | 2d | 2025-03-18 | 2025-03-19 |  |  |
| 45 | 1.6.2 | **Tópicos da Documentação** | 67d | 2025-03-20 | 2025-06-20 | 44 |  |
| 46 |  | Produção do tópico "Introdução" | 67d | 2025-03-20 | 2025-06-20 | 6SS |  |
| 47 |  | Produção do tópico "Revisão da Literatura" | 59d | 2025-04-01 | 2025-06-20 | 8SS |  |
| 48 |  | Produção do tópico "Gestão do Projeto" | 67d | 2025-03-20 | 2025-06-20 | 5SS |  |
| 49 | 1.6.2.4 | **Desenvolvimento do Projeto** | 52d | 2025-04-10 | 2025-06-20 | 12SS, 25SS, 36SS | start no earlier than 2025-04-10 |
| 50 |  | Produção do tópico "Escopo do Projeto" | 52d | 2025-04-10 | 2025-06-20 | 13SS |  |
| 51 |  | Produção do tópico "Histórias de Usuários" | 52d | 2025-04-10 | 2025-06-20 | 13SS |  |
| 52 |  | Produção do tópico "Arquitetura" | 52d | 2025-04-10 | 2025-06-20 | 18SS |  |
| 53 |  | Produção do tópico "Tecnologias" | 52d | 2025-04-10 | 2025-06-20 | 25SS |  |
| 54 |  | Produção do tópico "Testes e Manutenibildade" | 52d | 2025-04-10 | 2025-06-20 | 36SS |  |
| 55 |  | Produção do tópico "Segurança, Privacidade e Legislação" | 52d | 2025-04-10 | 2025-06-20 | 36SS |  |
| 56 |  | Produção do tópico "Modelo de Banco de Dados" | 52d | 2025-04-10 | 2025-06-20 | 36SS |  |
| 57 |  | Produção do tópico "Duração / Cronograma" | 52d | 2025-04-10 | 2025-06-20 |  |  |
| 58 |  | Produção do tópico "Viabilidade Financeira" | 42d | 2025-04-10 | 2025-06-06 | 25SS |  |
| 59 |  | Produção do tópico "Considerações Finais" | 10d | 2025-06-09 | 2025-06-20 | 58 |  |
| 60 |  | Supervisão do documento | 67d | 2025-03-20 | 2025-06-20 | 45SS |  |
| 61 |  | Produção do "Diário de Bordo" do projeto | 69d | 2025-03-18 | 2025-06-20 |  |  |
| 62 |  | Entrega da Documentação Final | 0d | 2025-06-24 | 2025-06-24 | 60, 63 | must finish on 2025-06-24 |
| 63 |  | Preenchimento da 4ª tabela de autoavaliação | 70d | 2025-03-18 | 2025-06-23 |  |  |
| 65 |  | Fim do Projeto | 0d | 2025-06-24 | 2025-06-24 | 62 |  |

## Version 2 (saved 2025-05-24)

Note of the change: docs: update tasks and allocate human resources in the project theme definition phase

Last finish stays 2025-06-24. Complete tasks 0 → 5.

Changed:

| ID | Task | Complete | Other |
| --- | --- | --- | --- |
| 1 | **Sistema para Gerenciamento de Salão de Beleza** | 0% → 11% |  |
| 2 | Início do Projeto |  | constraint none → start no earlier than 2025-03-18 |
| 4 | **Etapa 1: Definição do Tema** | 0% → 100% |  |
| 5 | Definição da equipe | 0% → 100% | resources none → Alyson |
| 6 | Busca da entidade parceira | 0% → 100% | resources none → Henrriky |
| 7 | Entrevista e alinhamento com entidade parceira | 0% → 100% | was named Alinhamento de expectativas com entidade parceira; resources none → Alyson [50%]; Henrriky [50%] |
| 8 | Elaboração e apresentação do tema | 0% → 100% | resources none → Alyson [16.67%]; Bruno [16.67%]; Eliel [16.67%]; Henrique [16.67%]; Henrriky [16.67%]; Giovanna [16.67%] |
| 10 | Preenchimento da 1ª tabela de autoavaliação | 0% → 100% | resources none → Alyson [16.67%]; Bruno [16.67%]; Eliel [16.67%]; Henrique [16.67%]; Henrriky [16.67%]; Giovanna [16.67%] |

## Version 3 (saved 2025-05-24)

Note of the change: docs: update tasks and allocate human resources in application design phase

Last finish stays 2025-06-24. Complete tasks 5 → 14.

Added:

| ID | Task | Duration | Start | Finish | Predecessors | Constraint | Resources |
| --- | --- | --- | --- | --- | --- | --- | --- |
| 22 | Elaboração e preparação para apresentação dos diagramas | 6d | 2025-04-21 | 2025-04-28 | 20SS, 21SS | as late as possible | Alyson [33.33%]; Henrique [33.33%]; Henrriky [33.33%] |

Changed:

| ID | Task | Start | Finish | Duration | Complete | Predecessors | Other |
| --- | --- | --- | --- | --- | --- | --- | --- |
| 1 | **Sistema para Gerenciamento de Salão de Beleza** |  |  |  | 11% → 22% |  |  |
| 4 | **Etapa 1: Definição do Tema** |  |  |  |  |  | constraint none → start no earlier than 2025-03-18 |
| 8 | Elaboração e apresentação do tema |  | 2025-04-08 → 2025-04-07 (-1d) | 6d → 5d |  |  | constraint must finish on 2025-04-09 → none |
| 9 | Aprovação do Tema |  |  |  |  |  | constraint none → start no earlier than 2025-04-08 |
| 10 | Preenchimento da 1ª tabela de autoavaliação | 2025-03-20 → 2025-03-18 (-2d) | 2025-04-08 → 2025-04-07 (-1d) | 14d → 15d |  |  | constraint as late as possible → none |
| 12 | **Etapa 2: Desenho da Aplicação** |  |  |  | 0% → 100% |  |  |
| 13 | **Elicitação de Requisitos** |  |  |  | 0% → 100% |  |  |
| 14 | Levantamento das regras de negócio |  |  |  | 0% → 100% |  | was named Coleta de informações; resources none → Alyson |
| 15 | Análise de requisitos |  | 2025-04-22 → 2025-04-23 (+1d) | 3d → 4d | 0% → 100% |  | resources none → Bruno |
| 16 | Formalização dos requisitos | 2025-04-23 → 2025-04-24 (+1d) |  | 3d → 2d | 0% → 100% |  | was named Definição formal dos requisitos; resources none → Alyson [50%]; Bruno [50%] |
| 17 | Validação dos requisitos |  |  |  | 0% → 100% |  | resources none → Henrriky |
| 18 | **Confecção de Diagramas** |  |  |  | 0% → 100% |  |  |
| 19 | Estudo de diagramas |  |  |  | 0% → 100% |  | resources none → Henrriky [50%]; Henrique [50%] |
| 20 | Criação do diagrama de componentes |  |  |  | 0% → 100% |  | resources none → Henrique [50%]; Henrriky [50%] |
| 21 | Criação do diagrama de implantação |  |  |  | 0% → 100% |  | resources none → Henrique [50%]; Henrriky [50%] |
| 23 | Entrega do Desenho da Aplicação |  |  |  |  | 20, 21, 24 → 22, 24 |  |
| 24 | Preenchimento da 2ª tabela de autoavaliação |  |  |  | 0% → 100% |  | constraint none → as late as possible; resources none → Alyson [16.67%]; Bruno [16.67%]; Eliel [16.67%]; Henrique [16.67%]; Henrriky [16.67%]; Giovanna [16.67%] |

## Version 4 (saved 2025-05-24)

Note of the change: docs: update tasks and allocate human resources in platform and technology research phase

Last finish stays 2025-06-24. Complete tasks 14 → 26.

Added:

| ID | Task | Duration | Start | Finish | Predecessors | Resources |
| --- | --- | --- | --- | --- | --- | --- |
| 32 | Definição de tecnologias e ferramentas de desenvolvimento | 4d | 2025-04-29 | 2025-05-02 | 29, 30, 31 | Alyson [25%]; Bruno [25%]; Eliel [25%]; Henrique [25%] |
| 34 | Estudo de plataformas de hospedagem e deploy | 10d | 2025-04-15 | 2025-04-28 | 27 | Henrique [50%]; Henrriky [50%] |
| 35 | Definição de ferramentas de versionamento | 10d | 2025-04-15 | 2025-04-28 | 27 | Alyson |
| 36 | Validação das plataformas e tecnologias | 3d | 2025-05-05 | 2025-05-07 | 32, 33, 34, 35 | Henrriky |
| 37 | Preparação para a prova de conceito | 7d | 2025-05-08 | 2025-05-16 | 36 | Henrique [50%]; Henrriky [50%] |

Removed: 28 Pesquisa de tecnologias e ferramentas de desenvolvimento

Changed:

| ID | Task | Start | Finish | Duration | Complete | Predecessors | Other |
| --- | --- | --- | --- | --- | --- | --- | --- |
| 1 | **Sistema para Gerenciamento de Salão de Beleza** |  |  |  | 22% → 37% |  |  |
| 15 | Análise de requisitos |  |  |  |  |  | resources Bruno → Bruno [50%]; Eliel [50%] |
| 26 | **Etapa 3: Estudo de Plataformas e Tecnologias** |  |  |  | 0% → 100% | 9SS → 9SS, 13SS |  |
| 27 | Levantamento de requisitos técnicos |  | 2025-04-11 → 2025-04-14 (+3d) | 3d → 4d | 0% → 100% |  | resources none → Henrriky |
| 28 | Definição da arquitetura do sistema | 2025-04-14 → 2025-04-15 (+1d) | 2025-05-19 → 2025-04-17 (-32d) | 26d → 3d | 0% → 100% |  | resources none → Henrique |
| 29 | Análise de tecnologias backend | 2025-04-14 → 2025-04-18 (+4d) | 2025-05-19 → 2025-04-28 (-21d) | 26d → 7d | 0% → 100% | 27 → 28 | was named Avaliação de banco de dados; resources none → Bruno [50%]; Eliel [50%] |
| 30 | Análise de tecnologias frontend | 2025-04-14 → 2025-04-18 (+4d) | 2025-05-19 → 2025-04-28 (-21d) | 26d → 7d | 0% → 100% | 27 → 28 | was named Análise de ferramentas de versionamento; resources none → Bruno [50%]; Eliel [50%] |
| 31 | Análise de banco de dados | 2025-04-14 → 2025-04-18 (+4d) | 2025-05-19 → 2025-04-28 (-21d) | 26d → 7d | 0% → 100% | 27 → 28 | was named Pesquisa de plataformas de deploy; resources none → Eliel [50%]; Henrique [50%] |
| 33 | Pesquisa sobre APIs e serviços de terceiros | 2025-04-14 → 2025-04-15 (+1d) | 2025-05-19 → 2025-04-28 (-21d) | 26d → 10d | 0% → 100% |  | was named Avaliação de ferramentas de gerenciamento de projeto; resources none → Henrique [50%]; Henrriky [50%] |
| 38 | Prova de Conceito |  |  |  |  | Pesquisa de tecnologias e ferramentas de desenvolvimento, 29, 30, 31, 28, 33, 39 → 23, 37, 39 |  |
| 39 | Preenchimento da 3ª tabela de autoavaliação | 2025-04-09 → 2025-04-29 (+20d) |  | 29d → 15d | 0% → 100% |  | constraint none → as late as possible; resources none → Alyson [16.67%]; Bruno [16.67%]; Eliel [16.67%]; Henrique [16.67%]; Henrriky [16.67%]; Giovanna [16.67%] |

## Version 5 (saved 2025-05-24)

Note of the change: docs: update tasks and allocate human resources in documentation phase

Last finish stays 2025-06-24. Complete tasks 26 → 27.

Added:

| ID | Task | Duration | Start | Finish | Predecessors | Resources |
| --- | --- | --- | --- | --- | --- | --- |
| 48 | Produção do projectlibre | 69d | 2025-03-18 | 2025-06-20 |  | Alyson |
| 50 | Criação do repositório remoto no GitHub | 2d | 2025-03-18 | 2025-03-19 |  | Henrriky |
| 51 | Definição de padronização para arquivos e diretórios da documentação | 2d | 2025-03-20 | 2025-03-21 | 50 | Giovanna [50%]; Alyson [50%] |

Removed: 35 Definição de ferramentas de versionamento; 49 Criação do projeto no Overleaf; 70 Fim do Projeto

Changed:

| ID | Task | Start | Finish | Duration | Complete | Predecessors | Other |
| --- | --- | --- | --- | --- | --- | --- | --- |
| 35 | Validação das plataformas e tecnologias |  |  |  |  | 32, 33, 34, Definição de ferramentas de versionamento → 32, 33, 34 |  |
| 47 | **Etapa 5: Documentação** |  |  |  | 0% → 5% |  |  |
| 49 | Produção do "Diário de Bordo" do projeto |  |  |  | 0% → 30% |  |  |
| 52 | **Tópicos da Documentação** | 2025-03-20 → 2025-03-24 (+4d) |  | 67d → 65d |  | Criação do projeto no Overleaf → 51 |  |
| 53 | Produção do tópico "Introdução" | 2025-03-20 → 2025-03-24 (+4d) |  | 67d → 65d |  |  |  |
| 55 | Produção do tópico "Gestão do Projeto" | 2025-03-20 → 2025-03-24 (+4d) |  | 67d → 65d |  |  |  |
| 65 | Produção do tópico "Viabilidade Financeira" |  | 2025-06-06 → 2025-06-20 (+14d) | 42d → 52d |  |  |  |
| 66 | Produção do tópico "Considerações Finais" | 2025-06-09 → 2025-03-24 (-77d) |  | 10d → 65d |  | 65 → none |  |
| 67 | Supervisão do documento | 2025-03-20 → 2025-03-24 (+4d) |  | 67d → 65d |  | 52SS → 52SS, 53FF, 54FF, 55FF, 57FF, 58FF, 59FF, 60FF, 61FF, 62FF, 63FF, 64FF, 66FF |  |
| 69 | Preenchimento da 4ª tabela de autoavaliação | 2025-03-18 → 2025-06-03 (+77d) |  | 70d → 15d |  |  | constraint none → as late as possible; resources none → Alyson [16.67%]; Bruno [16.67%]; Eliel [16.67%]; Henrique [16.67%]; Henrriky [16.67%]; Giovanna [16.67%] |

## Version 6 (saved 2025-05-26)

Note of the change: docs: add tasks in software development phase

Last finish stays 2025-06-24.

Added:

| ID | Task | Duration | Start | Finish | Predecessors |
| --- | --- | --- | --- | --- | --- |
| 45 | Transformação para modelo físico | 2d | 2025-04-24 | 2025-04-25 | 44 |
| 46 | Criação do schema no Prisma ORM | 2d | 2025-04-28 | 2025-04-29 | 45 |
| 47 | **Implementação do Back-End** | 22d | 2025-04-30 | 2025-05-29 | 46 |
| 48 | Configuração inicial do projeto | 2d | 2025-04-30 | 2025-05-01 |  |
| 49 | Implementação de autenticação com Google OAuth API | 10d | 2025-05-02 | 2025-05-15 | 48 |
| 50 | **Desenvolvimento de CRUDs** | 16d | 2025-05-02 | 2025-05-23 | 48 |
| 51 | Implementação do CRUD de cliente | 4d | 2025-05-02 | 2025-05-07 |  |
| 52 | Implementação do CRUD de funcionária | 4d | 2025-05-02 | 2025-05-07 |  |
| 53 | Implementação do CRUD de turno | 4d | 2025-05-08 | 2025-05-13 | 52 |
| 54 | Implementação do CRUD de serviço | 4d | 2025-05-02 | 2025-05-07 |  |
| 55 | Implementação do CRUD de oferta | 4d | 2025-05-14 | 2025-05-19 | 52, 53, 54 |
| 56 | Implementação do CRUD de agendamento | 4d | 2025-05-20 | 2025-05-23 | 51, 55 |
| 57 | Criação de endpoints da API REST | 4d | 2025-05-26 | 2025-05-29 | 50, 49 |
| 58 | **Implementação do Front-End** | 29d | 2025-04-30 | 2025-06-09 | 47SS |
| 59 | Configuração inicial do projeto frontend | 2d | 2025-04-30 | 2025-05-01 |  |
| 60 | Criação do design de telas | 10d | 2025-04-30 | 2025-05-13 |  |
| 61 | **Desenvolvimento de Telas** | 10d | 2025-05-14 | 2025-05-27 | 59, 60 |
| 62 | Implementação da interface de login/cadastro | 10d | 2025-05-14 | 2025-05-27 |  |
| 63 | Implementação da tela de visualização de serviços | 10d | 2025-05-14 | 2025-05-27 |  |
| 64 | Implementação da tela de agendamento | 10d | 2025-05-14 | 2025-05-27 |  |
| 65 | Implementação da tela de criação de serviços | 10d | 2025-05-14 | 2025-05-27 |  |
| 66 | Implementação da tela de turnos | 10d | 2025-05-14 | 2025-05-27 |  |
| 67 | Implementação da tela inicial | 10d | 2025-05-14 | 2025-05-27 |  |
| 68 | Integração com a API do backend | 7d | 2025-05-30 | 2025-06-09 | 57, 61 |
| 69 | **Deploy** | 10d | 2025-06-10 | 2025-06-23 | 47, 58 |
| 70 | Configuração de instâncias EC2 | 3d | 2025-06-10 | 2025-06-12 |  |
| 71 | Configuração de armazenamento e banco de dados | 3d | 2025-06-13 | 2025-06-17 | 70 |
| 72 | Configuração e deploy da aplicação | 4d | 2025-06-18 | 2025-06-23 | 71 |

Changed:

| ID | Task | Start | Finish | Duration | Complete | Predecessors | Other |
| --- | --- | --- | --- | --- | --- | --- | --- |
| 1 | **Sistema para Gerenciamento de Salão de Beleza** |  |  | 70d? → 70d | 37% → 34% |  |  |
| 40 | **Etapa 4: Desenvolvimento de Software** |  |  | 54d? → 54d |  | 9SS → 9SS, 13SS, 26SS |  |
| 41 | **Modelagem do Banco de Dados** |  | 2025-04-09 → 2025-04-29 (+20d) | 1d? → 15d |  |  |  |
| 42 | Levantamento das entidades principais |  | 2025-04-09 → 2025-04-15 (+6d) | 1d? → 5d |  |  | was named Implementação do Back-End |
| 43 | Definição dos relacionamentos entre entidades | 2025-04-09 → 2025-04-16 (+7d) | 2025-04-09 → 2025-04-18 (+9d) | 1d? → 3d |  | none → 42 | was named Implementação do Front-End |
| 44 | Criação do modelo lógico | 2025-04-09 → 2025-04-21 (+12d) | 2025-04-09 → 2025-04-23 (+14d) | 1d? → 3d |  | none → 43 | was named Deploy |
| 73 | Apresentação do MVP |  |  |  |  | none → 69 |  |

## Version 7 (saved 2025-05-27)

Note of the change: docs: synchronize new folder structure and docs files with develop branch

Last finish stays 2025-06-24.

Changed:

| ID | Task | Complete | Predecessors | Other |
| --- | --- | --- | --- | --- |
| 1 | **Sistema para Gerenciamento de Salão de Beleza** | 34% → 32% |  |  |
| 40 | **Etapa 4: Desenvolvimento de Software** |  | 9SS, 13SS, 26SS → 9SS, 13SS, 26SS, 78 |  |
| 42 | Levantamento das entidades principais |  |  | resources none → Eliel [50%]; Bruno [50%] |
| 43 | Definição dos relacionamentos entre entidades |  |  | resources none → Bruno [50%]; Eliel [50%] |
| 44 | Criação do modelo lógico |  |  | resources none → Eliel [50%]; Bruno [50%] |
| 45 | Transformação para modelo físico |  |  | resources none → Eliel [50%]; Bruno [50%] |
| 46 | Criação do schema no Prisma ORM |  |  | resources none → Henrriky |
| 48 | Configuração inicial do projeto |  |  | resources none → Henrriky |
| 49 | Implementação de autenticação com Google OAuth API |  |  | resources none → Henrriky [50%]; Henrique [50%] |
| 51 | Implementação do CRUD de cliente |  |  | resources none → Alyson |
| 52 | Implementação do CRUD de funcionária |  |  | resources none → Alyson |
| 53 | Implementação do CRUD de turno |  |  | resources none → Alyson |
| 54 | Implementação do CRUD de serviço |  |  | resources none → Eliel |
| 55 | Implementação do CRUD de oferta |  |  | resources none → Alyson |
| 56 | Implementação do CRUD de agendamento |  |  | resources none → Alyson |
| 57 | Criação de endpoints da API REST |  |  | resources none → Alyson [50%]; Henrriky [50%] |
| 59 | Configuração inicial do projeto frontend |  |  | resources none → Henrriky |
| 60 | Criação do design de telas |  |  | resources none → Henrriky |
| 62 | Implementação da interface de login/cadastro |  |  | resources none → Henrriky |
| 63 | Implementação da tela de visualização de serviços |  |  | resources none → Henrriky [50%]; Henrique [50%] |
| 64 | Implementação da tela de agendamento |  |  | resources none → Henrriky [50%]; Henrique [50%] |
| 65 | Implementação da tela de criação de serviços |  |  | resources none → Alyson |
| 66 | Implementação da tela de turnos |  |  | resources none → Henrique |
| 67 | Implementação da tela inicial |  |  | resources none → Eliel |
| 68 | Integração com a API do backend |  |  | resources none → Henrriky [25%]; Henrique [25%]; Eliel [25%]; Alyson [25%] |
| 70 | Configuração de instâncias EC2 |  |  | resources none → Henrriky [50%]; Henrique [50%] |
| 71 | Configuração de armazenamento e banco de dados |  |  | resources none → Henrriky [50%]; Henrique [50%] |
| 72 | Configuração e deploy da aplicação |  |  | resources none → Henrriky [50%]; Henrique [50%] |

## Version 8 (saved 2025-06-03)

Note of the change: docs: update projectlibre with development phase

Last finish 2025-06-24 → 2025-11-28 (+157d). Complete tasks 27 → 61.

Added:

| ID | Task | Duration | Start | Finish | Predecessors | Constraint | Resources |
| --- | --- | --- | --- | --- | --- | --- | --- |
| 4 | **Planejamento do Projeto (SPOPIE1)** | 81d | 2025-03-18 | 2025-07-08 | 2SS |  |  |
| 17 | Criação de histórias de usuários | 7d | 2025-04-09 | 2025-04-17 |  |  | Alyson |
| 29 | **Etapa 3: Gestão do Projeto** | 30d | 2025-04-09 | 2025-05-20 | 11SS |  |  |
| 30 | Definição das metodologias de gestão e desenvolvimento | 2d | 2025-04-09 | 2025-04-10 |  |  | Alyson |
| 31 | Escolha e configuração da ferramenta de gestão | 4d | 2025-04-11 | 2025-04-16 | 30 |  | Alyson |
| 32 | **Planejamento do Scrum** | 24d | 2025-04-17 | 2025-05-20 | 31 |  |  |
| 33 | Definição dos papéis do Scrum | 2d | 2025-04-17 | 2025-04-18 |  |  | Alyson |
| 34 | Priorização das histórias de usuário | 2d | 2025-04-21 | 2025-04-22 | 17, 33 |  | Alyson |
| 35 | Definição dos critérios de pronto | 4d | 2025-04-23 | 2025-04-28 | 34 |  | Alyson |
| 36 | Definição do product backlog inicial | 5d | 2025-04-29 | 2025-05-05 | 35 |  | Alyson |
| 37 | Estimativa de esforço | 2d | 2025-05-06 | 2025-05-07 | 36 |  | Alyson |
| 38 | Planejamento das sprints | 4d | 2025-05-08 | 2025-05-13 | 37 |  | Alyson |
| 39 | Quebra das histórias em tarefas técnicas | 5d | 2025-05-14 | 2025-05-20 | 38 |  | Alyson |
| 42 | **Etapa 4: Estudo de Plataformas e Tecnologias** | 29d | 2025-04-09 | 2025-05-20 | 11SS, 15SS |  |  |
| 56 | **Etapa 5: Desenvolvimento do MVP** | 54d | 2025-04-09 | 2025-06-24 | 11SS, 15SS, 42SS, 97SS |  |  |
| 78 | Criação inicial do design de telas | 10d | 2025-04-30 | 2025-05-13 |  |  | Henrriky [50%]; Bruno [50%] |
| 86 | Implementação da tela de dashboard inicial | 10d | 2025-05-14 | 2025-05-27 |  |  | Eliel |
| 95 | **Etapa 6: Documentação do Planejamento** | 64d | 2025-03-18 | 2025-06-13 | 2SS |  |  |
| 100 | **Produção da Documentação** | 56d | 2025-03-24 | 2025-06-09 | 98 |  |  |
| 101 | Produção do capítulo "Introdução" | 56d | 2025-03-24 | 2025-06-09 | 8SS |  | Giovanna [10%] |
| 102 | Produção do capítulo "Revisão da Literatura" | 50d | 2025-04-01 | 2025-06-09 | 10SS |  | Giovanna [10%] |
| 103 | Produção do capítulo "Gestão do Projeto" | 56d | 2025-03-24 | 2025-06-09 | 7SS |  | Alyson [10%] |
| 104 | **Produção do Capítulo "Desenvolvimento do Projeto"** | 43d | 2025-04-10 | 2025-06-09 | 14SS, 42SS, 56SS | start no earlier than 2025-04-10 |  |
| 122 | Aprovação na disciplina SPOPIE1 | 0d | 2025-07-08 | 2025-07-08 | 93FS+1.38d, 118 |  |  |
| 124 | **Desenvolvimento do Sistema (SPOPIE2)** | 79d | 2025-08-11 | 2025-11-28 | 122FS+2.88d |  |  |
| 125 | **Etapa 1: Melhorias no Processo de Agendamento** | 12d | 2025-08-11 | 2025-08-26 | 56 |  |  |
| 126 | Refatoração do back-end | 3d | 2025-08-11 | 2025-08-13 |  |  | Eliel |
| 127 | Refatoração do front-end | 3d | 2025-08-11 | 2025-08-13 |  |  | Henrriky |
| 128 | Correção de bugs existentes | 2d | 2025-08-14 | 2025-08-15 | 126, 127 |  | Henrique |
| 129 | Melhorias de UX | 2d | 2025-08-18 | 2025-08-19 | 128 |  | Bruno |
| 130 | Criação do design das demais telas do sistema | 3d | 2025-08-20 | 2025-08-22 | 129 |  | Bruno |
| 131 | Implementação das regras de negócio faltantes | 3d | 2025-08-20 | 2025-08-22 | 129 |  | Alyson |
| 132 | Incrementação na modelagem de dados | 2d | 2025-08-25 | 2025-08-26 | 131 |  | Eliel |
| 134 | **Etapa 2: Implementação do Processo de Aprovação de Novos Serviços** | 10d | 2025-08-27 | 2025-09-09 | 125 |  |  |
| 135 | Criação do formulário de sugestão de novo serviço | 2d | 2025-08-27 | 2025-08-28 |  |  | Eliel |
| 136 | Implementação da lógica de aprovação/reprovação | 3d | 2025-08-29 | 2025-09-02 | 135 |  | Henrriky |
| 137 | Persistência do histórico e justificativa no banco de dados | 2d | 2025-09-03 | 2025-09-04 | 136 |  | Henrique |
| 138 | Implementação de tela administrativa para visualização | 3d | 2025-09-05 | 2025-09-09 | 137 |  | Bruno |
| 140 | **Etapa 3: Implementação do Processo de Notificações** | 12d | 2025-09-10 | 2025-09-25 | 134 |  |  |
| 141 | Criação de eventos de notificação no back-end | 2d | 2025-09-10 | 2025-09-11 |  |  | Alyson |
| 142 | Implementação do envio de e-mail/push para novos agendamentos | 3d | 2025-09-12 | 2025-09-16 | 141 |  | Henrriky |
| 143 | Criação de notificações de alteração e cancelamento | 2d | 2025-09-17 | 2025-09-18 | 142 |  | Eliel |
| 144 | Definição de lembretes automáticos | 2d | 2025-09-19 | 2025-09-22 | 143 |  | Henrique |
| 145 | Implementação de telas para visualização e histórico | 3d | 2025-09-23 | 2025-09-25 | 144 |  | Bruno |
| 147 | **Etapa 4: Implementação do Processo de Geração de Relatórios** | 9d | 2025-09-26 | 2025-10-08 | 140 |  |  |
| 148 | **Relatórios de Captação de Clientes** | 6d | 2025-09-26 | 2025-10-03 |  |  |  |
| 149 | Criação de endpoint de clientes com filtro por canal de origem | 3d | 2025-09-26 | 2025-09-30 |  |  | Alyson |
| 150 | Implementação do gráfico de crescimento mensal | 3d | 2025-10-01 | 2025-10-03 | 149 |  | Alyson |
| 151 | **Relatórios de Produtividade** | 6d | 2025-09-26 | 2025-10-03 |  |  |  |
| 152 | Criação do endpoint para atendimentos por funcionário | 3d | 2025-09-26 | 2025-09-30 |  |  | Henrriky |
| 153 | Implementação do filtro por período e profissional | 3d | 2025-10-01 | 2025-10-03 | 152 |  | Henrriky |
| 154 | **Relatórios Financeiros** | 9d | 2025-09-26 | 2025-10-08 |  |  |  |
| 155 | Implementação do cálculo de faturamento por serviço | 3d | 2025-09-26 | 2025-09-30 |  |  | Eliel |
| 156 | Criação do relatório de comissões | 3d | 2025-10-01 | 2025-10-03 | 155 |  | Eliel |
| 157 | Exportação dados em PDF/Excel | 3d | 2025-10-06 | 2025-10-08 | 156 |  | Eliel |
| 158 | **Relatórios de Ocupação** | 6d | 2025-09-26 | 2025-10-03 |  |  |  |
| 159 | Geração do gráfico de horários ociosos e picos | 3d | 2025-09-26 | 2025-09-30 |  |  | Henrique |
| 160 | Implementação do cálculo de taxa de ocupação por hora e dia | 3d | 2025-10-01 | 2025-10-03 | 159 |  | Henrique |
| 162 | **Etapa 5: Implementação do Processo de Avaliação de Serviços** | 12d | 2025-10-09 | 2025-10-24 | 147 |  |  |
| 163 | Criação do endpoint de envio de avaliação | 3d | 2025-10-09 | 2025-10-13 |  |  | Henrriky |
| 164 | Implementação de telas de visualização das avaliações | 3d | 2025-10-14 | 2025-10-16 | 163 |  | Bruno |
| 165 | Geração de médias por serviço e por profissional | 3d | 2025-10-17 | 2025-10-21 | 164 |  | Eliel |
| 166 | Criação de gráfico e filtro de estatísticas | 3d | 2025-10-22 | 2025-10-24 | 165 |  | Alyson |
| 168 | **Etapa 6: Implementação do Processo de Programa de Indicação** | 12d | 2025-10-27 | 2025-11-11 | 162 |  |  |
| 169 | Criação da lógica de geração de códigos únicos | 2d | 2025-10-27 | 2025-10-28 |  |  | Henrique |
| 170 | Associação de códigos a novos cadastros | 2d | 2025-10-29 | 2025-10-30 | 169 |  | Alyson |
| 171 | Implementação da validação de indicação convertida | 3d | 2025-10-31 | 2025-11-04 | 170 |  | Henrriky |
| 172 | Automatização do sistema de recompensas | 2d | 2025-11-05 | 2025-11-06 | 171 |  | Eliel |
| 173 | Implementação de tela de histórico de indicações por cliente | 3d | 2025-11-07 | 2025-11-11 | 172 |  | Bruno |
| 175 | **Etapa 7: Implementação do Processo de Mensagens e Descontos de Aniversário** | 8d | 2025-11-12 | 2025-11-21 | 168 |  |  |
| 176 | Implementação de verificação automática de aniversariantes | 2d | 2025-11-12 | 2025-11-13 |  |  | Eliel |
| 177 | Criação de cupom com validade e regras de uso | 2d | 2025-11-14 | 2025-11-17 | 176 |  | Henrique |
| 178 | Criação de template e envio automático por e-mail | 2d | 2025-11-18 | 2025-11-19 | 177 |  | Henrriky |
| 179 | Implementação de tela para listar aniversariantes do mês | 2d | 2025-11-20 | 2025-11-21 | 178 |  | Bruno |
| 181 | **Etapa 8: Testes e Validação** | 75d | 2025-08-11 | 2025-11-21 |  |  |  |
| 182 | **Testes Automatizados** | 75d | 2025-08-11 | 2025-11-21 |  |  |  |
| 183 | Escrita de testes unitários | 69d | 2025-08-11 | 2025-11-13 |  |  | Henrique |
| 184 | Escrita de testes de integração | 69d | 2025-08-11 | 2025-11-13 |  |  | Henrique |
| 185 | Implementação de esteira CI/CD para testes automatizados | 3d | 2025-11-14 | 2025-11-18 | 183, 184 |  | Henrique |
| 186 | Análise estática de código | 3d | 2025-11-19 | 2025-11-21 | 185 |  | Henrique |
| 187 | **Homologação** | 10d | 2025-08-11 | 2025-08-22 |  |  |  |
| 188 | Apresentação do sistema para entidade parceira | 5d | 2025-08-11 | 2025-08-15 |  |  | Henrriky |
| 189 | Coleta de feedback e sugestões de melhoria | 5d | 2025-08-18 | 2025-08-22 | 188 |  | Alyson |
| 190 | **Auditoria Técnica** | 75d | 2025-08-11 | 2025-11-21 |  |  |  |
| 191 | Checklist de conformidade | 75d | 2025-08-11 | 2025-11-21 |  |  | Giovanna |
| 192 | Validação de logs | 75d | 2025-08-11 | 2025-11-21 |  |  | Giovanna |
| 193 | Autorização e rastreabilidade de dados | 75d | 2025-08-11 | 2025-11-21 |  |  | Giovanna |
| 195 | **Etapa 9: Deploy da Aplicação** | 10d | 2025-08-11 | 2025-08-22 |  |  |  |
| 196 | Criação de infraestrutura completa no EC2 (AWS) | 10d | 2025-08-11 | 2025-08-22 |  |  | Henrique [50%]; Henrriky [50%] |
| 197 | Configuração de CI/CD para build automático | 10d | 2025-08-11 | 2025-08-22 |  |  | Henrique [50%]; Henrriky [50%] |
| 199 | **Etapa 10: Fechamento e Entrega Final** | 69d | 2025-08-25 | 2025-11-28 | 187, 195 |  |  |
| 200 | Aplicação de correções finais | 69d | 2025-08-25 | 2025-11-27 |  |  | Alyson [50%]; Henrriky [50%] |
| 201 | Última revisão com stakeholders | 4d | 2025-10-20 | 2025-10-23 |  | as late as possible | Henrriky |
| 202 | Preparação para apresentação final do projeto | 25d | 2025-10-24 | 2025-11-27 | 200SS, 201 |  | Alyson [16.67%]; Bruno [16.67%]; Eliel [16.67%]; Henrique [16.67%]; Henrriky [16.67%]; Giovanna [16.67%] |
| 203 | Fim do Projeto | 0d | 2025-11-28 | 2025-11-28 | 202 | must finish on 2025-11-28 |  |
| 205 | **Documentação Geral do Projeto** | 183d | 2025-03-18 | 2025-11-27 |  |  |  |

Removed: 26 Etapa 3: Estudo de Plataformas e Tecnologias; 40 Etapa 4: Desenvolvimento de Software; 60 Criação do design de telas; 67 Implementação da tela inicial; 75 Etapa 5: Documentação; 81 Produção do tópico "Introdução"; 82 Produção do tópico "Revisão da Literatura"; 83 Produção do tópico "Gestão do Projeto"; 84 Desenvolvimento do Projeto

Changed:

| ID | Task | Start | Finish | Duration | Complete | Predecessors | Other |
| --- | --- | --- | --- | --- | --- | --- | --- |
| 1 | **Sistema para Gerenciamento de Salão de Beleza** |  | 2025-06-24 → 2025-11-28 (+157d) | 70d → 183d | 32% → 36% |  |  |
| 6 | **Etapa 1: Definição do Tema** |  |  |  |  | 2SS → none |  |
| 7 | Definição da equipe |  |  |  |  |  | resources Alyson → Alyson [70%] |
| 8 | Busca da entidade parceira |  |  |  |  |  | resources Henrriky → Henrriky [95%] |
| 10 | Elaboração e apresentação do tema |  | 2025-04-07 → 2025-04-08 (+1d) | 5d → 6d |  |  | resources Alyson [16.67%]; Bruno [16.67%]; Eliel [16.67%]; Henrique [16.67%]; Henrriky [16.67%]; Giovanna [16.67%] → Alyson [10%]; Bruno [10%]; Eliel [10%]; Henrique [10%]; Henrriky [10%]; Giovanna [30%] |
| 12 | Preenchimento da 1ª tabela de autoavaliação |  |  |  |  |  | resources Alyson [16.67%]; Bruno [16.67%]; Eliel [16.67%]; Henrique [16.67%]; Henrriky [16.67%]; Giovanna [16.67%] → Alyson [5%]; Bruno [5%]; Eliel [5%]; Henrique [5%]; Henrriky [5%]; Giovanna [5%] |
| 14 | **Etapa 2: Desenho da Aplicação** |  | 2025-04-29 → 2025-05-05 (+6d) | 15d → 19d |  |  |  |
| 15 | **Elicitação de Requisitos** |  | 2025-04-29 → 2025-05-05 (+6d) | 15d → 19d |  |  |  |
| 16 | Levantamento das regras de negócio |  |  |  |  |  | resources Alyson → Alyson [50%] |
| 18 | Análise de requisitos |  | 2025-04-23 → 2025-04-29 (+6d) | 4d → 8d |  | 16 → 16, 17 | resources Bruno [50%]; Eliel [50%] → Alyson [40%]; Bruno [30%]; Eliel [30%] |
| 19 | Formalização dos requisitos | 2025-04-24 → 2025-04-30 (+6d) | 2025-04-25 → 2025-05-01 (+6d) |  |  |  | resources Alyson [50%]; Bruno [50%] → Alyson [30%]; Bruno [50%] |
| 20 | Validação dos requisitos | 2025-04-28 → 2025-05-02 (+4d) | 2025-04-29 → 2025-05-05 (+6d) |  |  |  |  |
| 25 | Elaboração e preparação para apresentação dos diagramas |  |  |  |  |  | resources Alyson [33.33%]; Henrique [33.33%]; Henrriky [33.33%] → Henrique [50%]; Henrriky [50%] |
| 27 | Preenchimento da 2ª tabela de autoavaliação |  |  |  |  |  | resources Alyson [16.67%]; Bruno [16.67%]; Eliel [16.67%]; Henrique [16.67%]; Henrriky [16.67%]; Giovanna [16.67%] → Alyson [5%]; Bruno [5%]; Eliel [5%]; Henrique [5%]; Henrriky [5%]; Giovanna [5%] |
| 48 | Definição de tecnologias e ferramentas de desenvolvimento |  |  |  |  |  | resources Alyson [25%]; Bruno [25%]; Eliel [25%]; Henrique [25%] → Bruno [33.33%]; Eliel [33.33%]; Henrique [33.33%] |
| 54 | Preenchimento da 3ª tabela de autoavaliação |  |  |  |  |  | resources Alyson [16.67%]; Bruno [16.67%]; Eliel [16.67%]; Henrique [16.67%]; Henrriky [16.67%]; Giovanna [16.67%] → Alyson [5%]; Bruno [5%]; Eliel [5%]; Henrique [5%]; Henrriky [5%]; Giovanna [5%] |
| 57 | **Modelagem do Banco de Dados** |  |  |  | 0% → 100% |  |  |
| 58 | Levantamento das entidades principais |  |  |  | 0% → 100% |  |  |
| 59 | Definição dos relacionamentos entre entidades |  |  |  | 0% → 100% |  |  |
| 60 | Criação do modelo lógico |  |  |  | 0% → 100% |  |  |
| 61 | Transformação para modelo físico |  |  |  | 0% → 100% |  |  |
| 62 | Criação do schema no Prisma ORM |  |  |  | 0% → 100% |  |  |
| 64 | **Implementação do Back-End** |  |  |  | 0% → 100% |  |  |
| 65 | Configuração inicial do projeto |  |  |  | 0% → 100% |  |  |
| 66 | Implementação de autenticação com Google OAuth API |  |  |  | 0% → 100% |  |  |
| 67 | **Desenvolvimento de CRUDs** |  |  |  | 0% → 100% |  |  |
| 68 | Implementação do CRUD de cliente |  |  |  | 0% → 100% |  | resources Alyson → Alyson [25%] |
| 69 | Implementação do CRUD de funcionária |  |  |  | 0% → 100% |  | resources Alyson → Alyson [25%] |
| 70 | Implementação do CRUD de turno |  |  |  | 0% → 100% |  | resources Alyson → Alyson [50%] |
| 71 | Implementação do CRUD de serviço |  |  |  | 0% → 100% |  |  |
| 72 | Implementação do CRUD de oferta |  |  |  | 0% → 100% |  | resources Alyson → Alyson [20%] |
| 73 | Implementação do CRUD de agendamento |  |  |  | 0% → 100% |  | resources Alyson → Alyson [30%] |
| 74 | Criação de endpoints da API REST |  |  |  | 0% → 100% |  | resources Alyson [50%]; Henrriky [50%] → Alyson [35%]; Eliel [15%]; Henrique [20%]; Henrriky [30%] |
| 76 | **Implementação do Front-End** |  |  |  | 0% → 93% |  |  |
| 77 | Configuração inicial do projeto frontend |  |  |  | 0% → 100% |  |  |
| 79 | **Desenvolvimento de Telas** |  |  |  | 0% → 89% | 77, Criação do design de telas → 77, 78 |  |
| 80 | Implementação da página inicial da aplicação | 2025-03-24 → 2025-05-14 (+51d) | 2025-06-20 → 2025-05-27 (-24d) | 65d → 10d |  | 98 → none | was named Tópicos da Documentação; resources none → Bruno |
| 81 | Implementação da interface de login/cadastro |  |  |  | 0% → 100% |  |  |
| 82 | Implementação da tela de visualização de serviços |  |  |  | 0% → 100% |  |  |
| 83 | Implementação da tela de agendamento |  |  |  | 0% → 100% |  |  |
| 84 | Implementação da tela de criação de serviços |  |  |  | 0% → 100% |  | resources Alyson → Alyson [30%] |
| 85 | Implementação da tela de turnos |  |  |  | 0% → 100% |  |  |
| 87 | Integração com a API do backend |  |  |  | 0% → 100% |  | resources Henrriky [25%]; Henrique [25%]; Eliel [25%]; Alyson [25%] → Henrriky [35%]; Henrique [25%]; Eliel [25%]; Alyson [15%] |
| 89 | **Deploy** |  |  |  | 0% → 100% |  |  |
| 90 | Configuração de instâncias EC2 |  |  |  | 0% → 100% |  |  |
| 91 | Configuração de armazenamento e banco de dados |  |  |  | 0% → 100% |  |  |
| 92 | Configuração e deploy da aplicação |  |  |  | 0% → 100% |  |  |
| 96 | Produção do projectlibre | 2025-03-18 → 2025-03-24 (+6d) | 2025-06-20 → 2025-06-13 (-7d) | 69d → 60d | 40% → 0% |  | resources Alyson → Alyson [20%] |
| 97 | Criação do repositório remoto no GitHub |  |  |  |  |  | resources Henrriky → Henrriky [95%] |
| 105 | Produção do tópico "Escopo do Projeto" |  | 2025-06-20 → 2025-06-09 (-11d) | 52d → 43d |  |  |  |
| 106 | Produção do tópico "Histórias de Usuários" |  | 2025-06-20 → 2025-06-09 (-11d) | 52d → 43d |  |  |  |
| 107 | Produção do tópico "Arquitetura" |  | 2025-06-20 → 2025-06-09 (-11d) | 52d → 43d |  |  |  |
| 108 | Produção do tópico "Tecnologias" |  | 2025-06-20 → 2025-06-09 (-11d) | 52d → 43d |  | Etapa 3: Estudo de Plataformas e TecnologiasSS → 42SS |  |
| 109 | Produção do tópico "Testes e Manutenibildade" |  | 2025-06-20 → 2025-06-09 (-11d) | 52d → 43d |  | Etapa 4: Desenvolvimento de SoftwareSS → 56SS |  |
| 110 | Produção do tópico "Segurança, Privacidade e Legislação" |  | 2025-06-20 → 2025-06-09 (-11d) | 52d → 43d |  | Etapa 4: Desenvolvimento de SoftwareSS → 56SS |  |
| 111 | Produção do tópico "Modelo de Banco de Dados" |  | 2025-06-20 → 2025-06-09 (-11d) | 52d → 43d |  | Etapa 4: Desenvolvimento de SoftwareSS → 56SS |  |
| 112 | Produção do tópico "Duração / Cronograma" |  | 2025-06-20 → 2025-06-09 (-11d) | 52d → 43d |  |  |  |
| 113 | Produção do tópico "Viabilidade Financeira" |  | 2025-06-20 → 2025-06-09 (-11d) | 52d → 43d |  | Etapa 3: Estudo de Plataformas e TecnologiasSS → 42SS |  |
| 114 | Produção do tópico "Considerações Finais" |  | 2025-06-20 → 2025-06-09 (-11d) | 65d → 56d |  |  |  |
| 116 | Supervisão do documento |  | 2025-06-20 → 2025-06-09 (-11d) | 65d → 56d |  | 80SS, Produção do tópico "Introdução"FF, Produção do tópico "Revisão da Literatura"FF, Produção do tópico "Gestão do Projeto"FF, 105FF, 106FF, 107FF, 108FF, 109FF, 110FF, 111FF, 112FF, 114FF → 100SS, 101FF, 102FF, 103FF, 105FF, 106FF, 107FF, 108FF, 109FF, 110FF, 111FF, 112FF, 114FF | resources Giovanna [10%] → Giovanna [15%] |
| 118 | Entrega da Documentação Final | 2025-06-24 → 2025-06-10 (-14d) | 2025-06-24 → 2025-06-10 (-14d) |  |  |  | constraint must finish on 2025-06-24 → must finish on 2025-06-10 |
| 120 | Preenchimento da 4ª tabela de autoavaliação | 2025-06-03 → 2025-05-20 (-14d) | 2025-06-23 → 2025-06-09 (-14d) |  |  |  | resources Alyson [16.67%]; Bruno [16.67%]; Eliel [16.67%]; Henrique [16.67%]; Henrriky [16.67%]; Giovanna [16.67%] → Alyson [5%]; Bruno [5%]; Eliel [5%]; Henrique [5%]; Henrriky [5%]; Giovanna [5%] |
| 206 | Produção do "Diário de Bordo" do projeto |  | 2025-06-20 → 2025-11-27 (+160d) | 69d → 183d |  | none → 203FF | resources Giovanna [10%] → Giovanna [50%] |

## Version 9 (saved 2025-06-09)

Note of the change: docs: improve development tasks

Last finish 2025-11-28 → 2025-12-05 (+7d).

Added:

| ID | Task | Duration | Start | Finish | Predecessors | Constraint | Resources |
| --- | --- | --- | --- | --- | --- | --- | --- |
| 125 | **Gestão do Desenvolvimento** | 80d | 2025-08-11 | 2025-11-28 |  |  |  |
| 126 | Planejamento das sprints | 80d | 2025-08-11 | 2025-11-28 |  |  | Alyson [50%]; Henrriky [50%] |
| 127 | Reuniões diárias | 80d | 2025-08-11 | 2025-11-28 |  |  | Alyson [16.67%]; Bruno [16.67%]; Eliel [16.67%]; Henrique [16.67%]; Henrriky [16.67%]; Giovanna [16.67%] |
| 146 | Design das telas de serviços pendentes | 2d | 2025-08-25 | 2025-08-26 |  |  | Bruno |
| 147 | Validação com a entidade parceira | 2d | 2025-09-03 | 2025-09-04 |  | as late as possible | Alyson [50%]; Henrriky [50%] |
| 151 | Criação e ajustes na tabela de notificações do banco de dados | 2d | 2025-09-08 | 2025-09-09 |  |  | Henrriky |
| 154 | Integração do front-end com o back-end | 3d | 2025-09-16 | 2025-09-18 | 152, 153, 156 |  | Eliel [50%]; Henrique [50%] |
| 158 | Validação com a entidade parceira | 2d | 2025-09-17 | 2025-09-18 |  | as late as possible | Alyson [50%]; Henrriky [50%] |
| 165 | Implementação da lógica de análise das horas trabalhadas | 9d | 2025-09-22 | 2025-10-02 |  |  | Eliel |
| 167 | Relatórios Inicias Implementados | 0d | 2025-10-03 | 2025-10-03 | 162, 169 | must finish on 2025-10-03 |  |
| 175 | Implementação da lógica de análise dos horários de pico | 9d | 2025-10-06 | 2025-10-16 |  |  | Bruno |
| 180 | Implementação da lógica de análise de idade | 9d | 2025-10-06 | 2025-10-16 |  |  | Henrriky |
| 182 | Implementação da lógica de análise de origem | 9d | 2025-10-06 | 2025-10-16 |  |  | Bruno |
| 184 | Implementação de filtros diversos | 16d | 2025-09-22 | 2025-10-13 |  |  | Eliel [50%]; Henrique [50%] |
| 186 | Integração do front-end com o back-end | 3d | 2025-10-14 | 2025-10-16 | 184, 185, 188 |  | Eliel [50%]; Henrique [50%] |
| 190 | Validação com a entidade parceira | 2d | 2025-10-15 | 2025-10-16 |  | as late as possible | Alyson [50%]; Henrriky [50%] |
| 194 | Criação e ajustes na tabela de avaliação do banco de dados | 2d | 2025-10-20 | 2025-10-21 |  |  | Eliel |
| 195 | Implementação da lógica de avaliação de serviços | 4d | 2025-10-22 | 2025-10-27 | 194 |  | Henrique [50%]; Henrriky [50%] |
| 197 | Integração do front-end com o back-end | 3d | 2025-10-28 | 2025-10-30 | 195, 196, 199 |  | Bruno [50%]; Henrique [50%] |
| 198 | Processo de Avaliação de Serviços Implementado | 0d | 2025-10-31 | 2025-10-31 | 197, 201, 202 | must finish on 2025-10-31 |  |
| 199 | Implementação das telas | 4d | 2025-10-22 | 2025-10-27 | 200 |  | Bruno [50%]; Alyson [50%] |
| 200 | Design das telas de avaliação | 2d | 2025-10-20 | 2025-10-21 |  |  | Bruno |
| 201 | Validação com a entidade parceira | 2d | 2025-10-29 | 2025-10-30 |  | as late as possible | Alyson [50%]; Henrriky [50%] |
| 207 | Integração do front-end com o back-end | 3d | 2025-11-11 | 2025-11-13 | 206, 209 |  | Henrique [50%]; Alyson [50%] |
| 208 | Processo de Programa de Indicação Implementado | 0d | 2025-11-14 | 2025-11-14 | 207, 211, 212 | must finish on 2025-11-14 |  |
| 209 | Implementação das telas | 4d | 2025-11-05 | 2025-11-10 | 210 |  | Bruno |
| 210 | Design das telas do processo | 2d | 2025-11-03 | 2025-11-04 |  |  | Bruno |
| 211 | Validação com a entidade parceira | 2d | 2025-11-12 | 2025-11-13 |  | as late as possible | Alyson [50%]; Henrriky [50%] |
| 212 | Revisão do trabalho realizado | 2d | 2025-11-12 | 2025-11-13 |  | as late as possible | Alyson [16.67%]; Bruno [16.67%]; Eliel [16.67%]; Henrique [16.67%]; Henrriky [16.67%]; Giovanna [16.67%] |
| 215 | Revisão e ajustes no banco de dados | 2d | 2025-11-17 | 2025-11-18 |  |  | Henrique |
| 216 | Implementação da lógica de envio de mensagens de aniversário | 4d | 2025-11-19 | 2025-11-24 | 215 |  | Alyson |
| 217 | Implementação da lógica de descontos de aniversário | 4d | 2025-11-19 | 2025-11-24 | 215 |  | Henrique [50%]; Henrriky [50%] |
| 218 | Integração do front-end com o back-end | 3d | 2025-11-25 | 2025-11-27 | 216, 217, 220 |  | Eliel |
| 219 | Processo de Mensagens e Descontos de Aniversário Implementado | 0d | 2025-11-28 | 2025-11-28 | 218, 222, 223 | must finish on 2025-11-28 |  |
| 220 | Implementação das telas | 4d | 2025-11-19 | 2025-11-24 | 221 |  | Bruno [50%]; Eliel [50%] |
| 221 | Design das telas do processo | 2d | 2025-11-17 | 2025-11-18 |  |  | Bruno |
| 222 | Validação com a entidade parceira | 2d | 2025-11-26 | 2025-11-27 |  | as late as possible | Alyson [50%]; Henrriky [50%] |
| 223 | Revisão do trabalho realizado | 2d | 2025-11-26 | 2025-11-27 |  | as late as possible | Alyson [16.67%]; Bruno [16.67%]; Eliel [16.67%]; Henrique [16.67%]; Henrriky [16.67%]; Giovanna [16.67%] |
| 225 | Sistema Completamente Implementado | 0d | 2025-12-01 | 2025-12-01 | 219, 227, 242 | must finish on 2025-12-01 |  |
| 227 | **Etapa 8: Testes e Auditoria** | 80d | 2025-08-11 | 2025-11-28 |  |  |  |
| 230 | Escrita de testes de componente | 80d | 2025-08-11 | 2025-11-28 |  |  | Henrique [50%]; Henrriky [50%] |
| 232 | Escrita de testes end-to-end | 80d | 2025-08-11 | 2025-11-28 |  |  | Henrique [50%]; Henrriky [50%] |
| 236 | Auditoria de funcionalidades | 80d | 2025-08-11 | 2025-11-28 |  |  | Giovanna |
| 237 | Auditoria de dados e consistência | 80d | 2025-08-11 | 2025-11-28 |  |  | Giovanna |
| 238 | Verificação de segurança básica | 80d | 2025-08-11 | 2025-11-28 |  |  | Giovanna |
| 239 | Auditoria de usabilidade e experiência | 80d | 2025-08-11 | 2025-11-28 |  |  | Giovanna |
| 240 | Criação de relatórios de auditoria | 80d | 2025-08-11 | 2025-11-28 |  |  | Giovanna |
| 249 | Incremento da documentação | 83d | 2025-08-12 | 2025-12-04 |  | start no earlier than 2025-08-12 | Giovanna [33.33%]; Henrique [33.33%]; Alyson [33%] |
| 252 | Preparação para a apresentação final do projeto | 21d | 2025-11-05 | 2025-12-03 | 250SS, 251SS | as late as possible | Alyson [16.67%]; Bruno [16.67%]; Eliel [16.67%]; Henrique [16.67%]; Henrriky [16.67%]; Giovanna [16.67%] |
| 253 | Apresentação do Projeto | 0d | 2025-12-04 | 2025-12-04 | 225, 249, 252 | must finish on 2025-12-04 |  |
| 255 | **Diário de Bordo** | 188d | 2025-03-18 | 2025-12-04 | 2SS |  |  |
| 256 | Produção do diário de bordo da equipe | 188d | 2025-03-18 | 2025-12-04 | 246FF | must start on 2025-03-18 | Giovanna |

Removed: 132 Incrementação na modelagem de dados; 142 Implementação do envio de e-mail/push para novos agendamentos; 149 Criação de endpoint de clientes com filtro por canal de origem; 150 Implementação do gráfico de crescimento mensal; 160 Implementação do cálculo de taxa de ocupação por hora e dia; 166 Criação de gráfico e filtro de estatísticas; 169 Criação da lógica de geração de códigos únicos; 173 Implementação de tela de histórico de indicações por cliente; 178 Criação de template e envio automático por e-mail; 192 Validação de logs; 193 Autorização e rastreabilidade de dados

Changed:

| ID | Task | Start | Finish | Duration | Complete | Predecessors | Other |
| --- | --- | --- | --- | --- | --- | --- | --- |
| 1 | **Sistema para Gerenciamento de Salão de Beleza** |  | 2025-11-28 → 2025-12-05 (+7d) | 183d → 188d | 36% → 19% |  |  |
| 2 | Início do Projeto |  |  |  |  |  | constraint start no earlier than 2025-03-18 → must start on 2025-03-18 |
| 65 | Configuração inicial do projeto back-end |  |  |  |  |  | was named Configuração inicial do projeto |
| 77 | Configuração inicial do projeto front-end |  |  |  |  |  | was named Configuração inicial do projeto frontend |
| 112 | Produção do tópico "Duração / Cronograma" |  |  |  |  |  | resources Henrique [10%] → Alyson |
| 124 | **Desenvolvimento do Sistema (SPOPIE2)** |  | 2025-11-28 → 2025-12-05 (+7d) | 79d → 84d |  |  |  |
| 129 | **Etapa 1: Melhorias no Processo de Agendamento** |  | 2025-08-26 → 2025-08-22 (-4d) | 12d → 9d |  |  |  |
| 130 | Revisão da modelagem do banco de dados | 2025-08-20 → 2025-08-11 (-9d) | 2025-08-22 → 2025-08-12 (-10d) | 3d → 2d |  | 136 → none | was named Criação do design das demais telas do sistema; resources Bruno → Eliel |
| 131 | Refatoração do back-end | 2025-08-11 → 2025-08-13 (+2d) | 2025-08-13 → 2025-08-18 (+5d) | 3d → 4d |  | none → 130 | resources Eliel → Eliel [50%]; Henrique [50%] |
| 132 | Refatoração do front-end | 2025-08-11 → 2025-08-13 (+2d) | 2025-08-13 → 2025-08-18 (+5d) | 3d → 4d |  | none → 130 | resources Henrriky → Bruno [50%]; Henrriky [50%] |
| 133 | Correção de bugs existentes | 2025-08-14 → 2025-08-19 (+5d) | 2025-08-15 → 2025-08-21 (+6d) | 2d → 3d |  |  | resources Henrique → Eliel [33.33%]; Henrique [33.33%]; Henrriky [33%] |
| 134 | Implementação das regras de negócio faltantes | 2025-08-20 → 2025-08-13 (-7d) | 2025-08-22 → 2025-08-21 (-1d) | 3d → 7d |  | 136 → 130 | resources Alyson → Alyson [25%]; Eliel [25%]; Henrique [25%]; Henrriky [25%] |
| 135 | MVP Melhorado | 2025-08-27 → 2025-08-22 (-5d) | 2025-08-28 → 2025-08-22 (-6d) | 2d → 0d |  | none → 133, 134, 136, 137, 138 | was named Criação do formulário de sugestão de novo serviço; constraint none → must finish on 2025-08-22; resources Eliel → none |
| 136 | Melhorias de UX | 2025-08-18 → 2025-08-11 (-7d) | 2025-08-19 → 2025-08-21 (+2d) | 2d → 9d |  | 133 → none |  |
| 137 | Validação com a entidade parceira | 2025-09-03 → 2025-08-20 (-14d) | 2025-09-04 → 2025-08-21 (-14d) |  |  | 142 → none | was named Persistência do histórico e justificativa no banco de dados; constraint none → as late as possible; resources Henrique → Alyson [50%]; Henrriky [50%] |
| 138 | Revisão do trabalho realizado | 2025-09-05 → 2025-08-20 (-16d) | 2025-09-09 → 2025-08-21 (-19d) | 3d → 2d |  | 137 → none | was named Implementação de tela administrativa para visualização; constraint none → as late as possible; resources Bruno → Alyson [16.67%]; Bruno [16.67%]; Eliel [16.67%]; Henrique [16.67%]; Henrriky [16.67%]; Giovanna [16.67%] |
| 140 | **Etapa 2: Implementação do Processo de Aprovação de Novos Serviços** | 2025-08-27 → 2025-08-25 (-2d) | 2025-09-09 → 2025-09-05 (-4d) | 10d → 9d |  | 129 → 135FS+0.12d |  |
| 141 | Ajustes na tabela de serviços do banco de dados | 2025-09-10 → 2025-08-25 (-16d) | 2025-09-11 → 2025-08-26 (-16d) |  |  |  | was named Criação de eventos de notificação no back-end; resources Alyson → Eliel |
| 142 | Implementação da lógica de aprovação/reprovação | 2025-08-29 → 2025-08-27 (-2d) | 2025-09-02 → 2025-09-01 (-1d) | 3d → 4d |  | 135 → 141 | resources Henrriky → Henrriky [50%]; Eliel [50%] |
| 143 | Integração do front-end com o back-end | 2025-09-17 → 2025-09-02 (-15d) | 2025-09-18 → 2025-09-04 (-14d) | 2d → 3d |  | Implementação do envio de e-mail/push para novos agendamentos → 142, 145 | was named Criação de notificações de alteração e cancelamento; resources Eliel → Henrique [50%]; Henrriky [50%] |
| 144 | Prcoesso de Aprovação de Serviços Implementado | 2025-09-19 → 2025-09-05 (-14d) | 2025-09-22 → 2025-09-05 (-17d) | 2d → 0d |  | 143 → 143, 147, 148 | was named Definição de lembretes automáticos; constraint none → must finish on 2025-09-05; resources Henrique → none |
| 145 | Implementação das telas | 2025-09-23 → 2025-08-27 (-27d) | 2025-09-25 → 2025-09-01 (-24d) | 3d → 4d |  | 144 → 146 | was named Implementação de telas para visualização e histórico; resources Bruno → Bruno [50%]; Alyson [50%] |
| 148 | Revisão do trabalho realizado | 2025-09-26 → 2025-09-03 (-23d) | 2025-10-03 → 2025-09-04 (-29d) | 6d → 2d |  |  | was named Relatórios de Captação de Clientes; constraint none → as late as possible; resources none → Alyson [16.67%]; Bruno [16.67%]; Eliel [16.67%]; Henrique [16.67%]; Henrriky [16.67%]; Giovanna [16.67%] |
| 150 | **Etapa 3: Implementação do Processo de Notificações** | 2025-09-10 → 2025-09-08 (-2d) | 2025-09-25 → 2025-09-19 (-6d) | 12d → 9d |  | 140 → 144FS+0.12d |  |
| 152 | Implementação do envio de notificações para novos agendamentos | 2025-09-26 → 2025-09-10 (-16d) | 2025-09-30 → 2025-09-15 (-15d) | 3d → 4d |  | none → 151 | was named Criação do endpoint para atendimentos por funcionário; resources Henrriky → Henrique [50%]; Henrriky [50%] |
| 153 | Implementação do envio de notificações para cancelamentos e alterações | 2025-10-01 → 2025-09-10 (-21d) | 2025-10-03 → 2025-09-15 (-18d) | 3d → 4d |  | 152 → 151 | was named Implementação do filtro por período e profissional; resources Henrriky → Alyson |
| 155 | Processo de Notificações Implementado | 2025-09-26 → 2025-09-19 (-7d) | 2025-09-30 → 2025-09-19 (-11d) | 3d → 0d |  | none → 154, 158, 159 | was named Implementação do cálculo de faturamento por serviço; constraint none → must finish on 2025-09-19; resources Eliel → none |
| 156 | Implementação das telas para visualização e histórico | 2025-10-01 → 2025-09-10 (-21d) | 2025-10-03 → 2025-09-15 (-18d) | 3d → 4d |  | 155 → 157 | was named Criação do relatório de comissões; resources Eliel → Bruno [50%]; Eliel [50%] |
| 157 | Design das telas de notificação | 2025-10-06 → 2025-09-08 (-28d) | 2025-10-08 → 2025-09-09 (-29d) | 3d → 2d |  | 156 → none | was named Exportação dados em PDF/Excel; resources Eliel → Bruno |
| 159 | Revisão do trabalho realizado | 2025-09-26 → 2025-09-17 (-9d) | 2025-09-30 → 2025-09-18 (-12d) | 3d → 2d |  |  | was named Geração do gráfico de horários ociosos e picos; constraint none → as late as possible; resources Henrique → Alyson [16.67%]; Bruno [16.67%]; Eliel [16.67%]; Henrique [16.67%]; Henrriky [16.67%]; Giovanna [16.67%] |
| 161 | **Etapa 4: Implementação do Processo de Geração de Relatórios** | 2025-09-26 → 2025-09-22 (-4d) | 2025-10-08 → 2025-10-17 (+9d) | 9d → 19d |  | 150 → 155FS+0.12d |  |
| 162 | **Relatórios de Produtividade** | 2025-09-26 → 2025-09-22 (-4d) | 2025-10-03 → 2025-10-02 (-1d) | 6d → 9d |  |  |  |
| 163 | Implementação da lógica de análise do total de atendimentos | 2025-10-09 → 2025-09-22 (-17d) | 2025-10-13 → 2025-10-02 (-11d) | 3d → 9d |  |  | was named Criação do endpoint de envio de avaliação; resources Henrriky → Alyson |
| 164 | Implementação da lógica de análise do número de clientes atendidos | 2025-10-14 → 2025-09-22 (-22d) | 2025-10-16 → 2025-10-02 (-14d) | 3d → 9d |  | 163 → none | was named Implementação de telas de visualização das avaliações |
| 169 | **Relatórios Financeiros** | 2025-09-26 → 2025-09-22 (-4d) | 2025-10-08 → 2025-10-02 (-6d) |  |  |  |  |
| 170 | Implementação da lógica de análise do rendimento por profissional | 2025-10-29 → 2025-09-22 (-37d) | 2025-10-30 → 2025-10-02 (-28d) | 2d → 9d |  | Criação da lógica de geração de códigos únicos → none | was named Associação de códigos a novos cadastros; resources Alyson → Henrique |
| 171 | Implementação da lógica de análise do rendimento por serviço/categoria | 2025-10-31 → 2025-09-22 (-39d) | 2025-11-04 → 2025-10-02 (-33d) | 3d → 9d |  | 170 → none | was named Implementação da validação de indicação convertida |
| 172 | Implementação da lógica de análise do rendimento total | 2025-11-05 → 2025-09-22 (-44d) | 2025-11-06 → 2025-10-02 (-35d) | 2d → 9d |  | 171 → none | was named Automatização do sistema de recompensas; resources Eliel → Alyson |
| 174 | **Relatórios de Ocupação** | 2025-09-26 → 2025-10-06 (+10d) | 2025-10-03 → 2025-10-16 (+13d) | 6d → 9d |  | none → 167FS+0.12d |  |
| 176 | Implementação da lógica de análise dos serviços mais agendados | 2025-11-12 → 2025-10-06 (-37d) | 2025-11-13 → 2025-10-16 (-28d) | 2d → 9d |  |  | was named Implementação de verificação automática de aniversariantes |
| 177 | Implementação da lógica de análise de profissionais mais requisitadas | 2025-11-14 → 2025-10-06 (-39d) | 2025-11-17 → 2025-10-16 (-32d) | 2d → 9d |  | 176 → none | was named Criação de cupom com validade e regras de uso |
| 179 | **Relatórios de Cliente** | 2025-11-20 → 2025-10-06 (-45d) | 2025-11-21 → 2025-10-16 (-36d) | 2d → 9d |  | Criação de template e envio automático por e-mail → 167FS+0.12d | was named Implementação de tela para listar aniversariantes do mês; resources Bruno → none |
| 181 | Implementação da lógica de análise de sexo | 2025-08-11 → 2025-10-06 (+56d) | 2025-11-21 → 2025-10-16 (-36d) | 75d → 9d |  |  | was named Etapa 8: Testes e Validação; resources none → Alyson |
| 185 | Geração de gráficos | 2025-11-14 → 2025-09-22 (-53d) | 2025-11-18 → 2025-10-13 (-36d) | 3d → 16d |  | 229, 231 → none | was named Implementação de esteira CI/CD para testes automatizados; resources Henrique → Alyson [50%]; Henrriky [50%] |
| 187 | Processo de Geração de Relatórios Implementado | 2025-08-11 → 2025-10-17 (+67d) | 2025-08-22 → 2025-10-17 (+56d) | 10d → 0d |  | none → 174, 179, 186, 190, 191 | was named Homologação; constraint none → must finish on 2025-10-17 |
| 188 | Implementação das telas | 2025-08-11 → 2025-09-29 (+49d) | 2025-08-15 → 2025-10-13 (+59d) | 5d → 11d |  | none → 189 | was named Apresentação do sistema para entidade parceira; resources Henrriky → Alyson [20%]; Bruno [20%]; Eliel [20%]; Henrique [20%]; Henrriky [20%] |
| 189 | Design das telas de relatórios | 2025-08-18 → 2025-09-22 (+35d) | 2025-08-22 → 2025-09-26 (+35d) |  |  | 188 → none | was named Coleta de feedback e sugestões de melhoria; resources Alyson → Bruno |
| 191 | Revisão do trabalho realizado | 2025-08-11 → 2025-10-15 (+65d) | 2025-11-21 → 2025-10-16 (-36d) | 75d → 2d |  |  | was named Checklist de conformidade; constraint none → as late as possible; resources Giovanna → Alyson [16.67%]; Bruno [16.67%]; Eliel [16.67%]; Henrique [16.67%]; Henrriky [16.67%]; Giovanna [16.67%] |
| 193 | **Etapa 5: Implementação do Processo de Avaliação de Serviços** | 2025-10-09 → 2025-10-20 (+11d) | 2025-10-24 → 2025-10-31 (+7d) | 12d → 9d |  | 161 → 187FS+0.12d |  |
| 196 | Geração de médias por serviço e por profissional | 2025-10-17 → 2025-10-22 (+5d) | 2025-10-21 → 2025-10-27 (+6d) | 3d → 4d |  | 164 → 195SS |  |
| 202 | Revisão do trabalho realizado | 2025-10-24 → 2025-10-29 (+5d) | 2025-11-27 → 2025-10-30 (-28d) | 25d → 2d |  | 250SS, 251 → none | was named Preparação para apresentação final do projeto; constraint none → as late as possible |
| 204 | **Etapa 6: Implementação do Processo de Programa de Indicação** | 2025-10-27 → 2025-11-03 (+7d) | 2025-11-11 → 2025-11-14 (+3d) | 12d → 9d |  | 193 → 198FS+0.12d |  |
| 205 | Ajustes na tabela de clientes do banco de dados | 2025-03-18 → 2025-11-03 (+230d) | 2025-11-27 → 2025-11-04 (-23d) | 183d → 2d | 30% → 0% |  | was named Documentação Geral do Projeto; resources none → Alyson |
| 206 | Implementação da lógica do programa de indicação | 2025-03-18 → 2025-11-05 (+232d) | 2025-11-27 → 2025-11-10 (-17d) | 183d → 4d | 30% → 0% | 246FF → 205 | was named Produção do "Diário de Bordo" do projeto; resources Giovanna [50%] → Henrriky [50%]; Eliel [50%] |
| 214 | **Etapa 7: Implementação do Processo de Mensagens e Descontos de Aniversário** | 2025-11-12 → 2025-11-17 (+5d) | 2025-11-21 → 2025-11-28 (+7d) | 8d → 9d |  | 204 → 208FS+0.12d |  |
| 228 | **Testes Automatizados** |  | 2025-11-21 → 2025-11-28 (+7d) | 75d → 80d |  |  |  |
| 229 | Escrita de testes unitários |  | 2025-11-13 → 2025-11-28 (+15d) | 69d → 80d |  |  | resources Henrique → Henrique [50%]; Henrriky [50%] |
| 231 | Escrita de testes de integração |  | 2025-11-13 → 2025-11-28 (+15d) | 69d → 80d |  |  | resources Henrique → Henrique [50%]; Henrriky [50%] |
| 233 | Análise estática de código | 2025-11-19 → 2025-08-11 (-100d) | 2025-11-21 → 2025-11-28 (+7d) | 3d → 80d |  | 185 → none | resources Henrique → Henrique [50%]; Henrriky [50%] |
| 235 | **Auditoria Técnica** |  | 2025-11-21 → 2025-11-28 (+7d) | 75d → 80d |  |  |  |
| 242 | **Etapa 9: Deploy da Aplicação** |  | 2025-08-22 → 2025-09-05 (+14d) | 10d → 20d |  |  |  |
| 243 | Criação de infraestrutura completa no EC2 (AWS) |  |  |  |  |  | resources Henrique [50%]; Henrriky [50%] → Henrriky [50%]; Henrique [50%] |
| 244 | Configuração de CI/CD para build automático | 2025-08-11 → 2025-08-25 (+14d) | 2025-08-22 → 2025-09-05 (+14d) |  |  | none → 243 | resources Henrique [50%]; Henrriky [50%] → Henrriky [50%]; Henrique [50%] |
| 246 | Fim do Projeto | 2025-11-28 → 2025-12-05 (+7d) | 2025-11-28 → 2025-12-05 (+7d) |  |  | 202 → 225, 253 | constraint must finish on 2025-11-28 → must finish on 2025-12-05 |
| 248 | **Etapa 10: Fechamento e Entrega Final** | 2025-08-25 → 2025-08-12 (-13d) | 2025-11-28 → 2025-12-04 (+6d) | 69d → 83d |  | 187, 242 → none |  |
| 250 | Aplicação de correções finais | 2025-08-25 → 2025-11-05 (+72d) | 2025-11-27 → 2025-12-03 (+6d) | 69d → 21d |  |  | constraint none → as late as possible; resources Alyson [50%]; Henrriky [50%] → Bruno [33.33%]; Eliel [33.33%]; Henrique [33.33%] |
| 251 | Última revisão com stakeholders | 2025-10-20 → 2025-11-05 (+16d) | 2025-10-23 → 2025-12-03 (+41d) | 4d → 21d |  |  | resources Henrriky → Alyson [50%]; Henrriky [50%] |

## Version 10 (saved 2025-06-16)

Note of the change: docs: update the completion percentage of tasks

Last finish stays 2025-12-05. Complete tasks 61 → 76.

Changed:

| ID | Task | Complete |
| --- | --- | --- |
| 1 | **Sistema para Gerenciamento de Salão de Beleza** | 19% → 35% |
| 4 | **Planejamento do Projeto (SPOPIE1)** | 55% → 97% |
| 29 | **Etapa 3: Gestão do Projeto** | 57% → 100% |
| 32 | **Planejamento do Scrum** | 46% → 100% |
| 35 | Definição dos critérios de pronto | 0% → 100% |
| 38 | Planejamento das sprints | 0% → 100% |
| 39 | Quebra das histórias em tarefas técnicas | 0% → 100% |
| 56 | **Etapa 5: Desenvolvimento do MVP** | 96% → 98% |
| 76 | **Implementação do Front-End** | 93% → 96% |
| 79 | **Desenvolvimento de Telas** | 89% → 94% |
| 80 | Implementação da página inicial da aplicação | 0% → 50% |
| 95 | **Etapa 6: Documentação do Planejamento** | 13% → 95% |
| 96 | Produção do projectlibre | 0% → 90% |
| 100 | **Produção da Documentação** | 17% → 100% |
| 102 | Produção do capítulo "Revisão da Literatura" | 0% → 100% |
| 103 | Produção do capítulo "Gestão do Projeto" | 80% → 100% |
| 104 | **Produção do Capítulo "Desenvolvimento do Projeto"** | 0% → 100% |
| 105 | Produção do tópico "Escopo do Projeto" | 0% → 100% |
| 106 | Produção do tópico "Histórias de Usuários" | 0% → 100% |
| 107 | Produção do tópico "Arquitetura" | 0% → 100% |
| 108 | Produção do tópico "Tecnologias" | 0% → 100% |
| 109 | Produção do tópico "Testes e Manutenibildade" | 0% → 100% |
| 110 | Produção do tópico "Segurança, Privacidade e Legislação" | 0% → 100% |
| 111 | Produção do tópico "Modelo de Banco de Dados" | 0% → 100% |
| 112 | Produção do tópico "Duração / Cronograma" | 0% → 100% |
| 113 | Produção do tópico "Viabilidade Financeira" | 0% → 100% |
| 114 | Produção do tópico "Considerações Finais" | 0% → 100% |
| 116 | Supervisão do documento | 0% → 90% |
| 120 | Preenchimento da 4ª tabela de autoavaliação | 0% → 70% |
| 255 | **Diário de Bordo** | 0% → 34% |
| 256 | Produção do diário de bordo da equipe | 0% → 34% |
